# 项目进度计划

Schedule from a web Gantt chart, 2024-05-29 to 2025-08-28.
Every day is a working day

## Schedule

| ID | WBS | Task | Duration | Start | Finish |
| --- | --- | --- | --- | --- | --- |
| 2 | 1 | **签订合同到安装调试 6个月** | 457d | 2024-05-29 | 2025-08-28 |
| 3 | 1.1 | 签合同 | 3d | 2024-05-29 | 2024-05-31 |
| 4 | 1.2 | 设备生产 | 30d | 2024-06-01 | 2024-06-30 |
| 5 | 1.3 | 勘察 | 15d | 2024-06-03 | 2024-06-17 |
| 6 | 1.4 | 施工方案设计 | 21d | 2024-06-18 | 2024-07-08 |
| 7 | 1.5 | 出厂验收 | 3d | 2024-06-28 | 2024-06-30 |
| 8 | 1.6 | 运输 | 10d | 2024-07-01 | 2024-07-10 |
| 9 | 1.7 | 集成应用系统开发 | 129d | 2024-07-09 | 2024-11-14 |
| 10 | 1.8 | **安装调试** | 414d | 2024-07-11 | 2025-08-28 |
| 11 | 1.8.1 | **工程组1** | 31d | 2025-07-29 | 2025-08-28 |
| 12 | 1.8.1.1 | 高频地波雷达安装调试 | 7d | 2025-07-29 | 2025-08-04 |
| 13 | 1.8.1.2 | 自动气象站安装调试 | 3d | 2025-08-05 | 2025-08-07 |
| 14 | 1.8.1.3 | 视频监控安装调试 | 1d | 2025-08-08 | 2025-08-08 |
| 15 | 1.8.1.4 | 北斗终端调试接入 | 1d | 2025-08-09 | 2025-08-09 |
| 16 | 1.8.1.5 | VSAT小站安装调试 | 3d | 2025-08-10 | 2025-08-12 |
| 17 | 1.8.1.6 | KVM调试 | 1d | 2025-08-13 | 2025-08-13 |
| 18 | 1.8.1.7 | 运控装置安装调试 | 1d | 2025-08-14 | 2025-08-14 |
| 19 | 1.8.1.8 | 前端软件调试 | 14d | 2025-08-15 | 2025-08-28 |
| 20 | 1.8.2 | **工程组2** | 31d | 2024-08-29 | 2024-09-28 |
| 21 | 1.8.2.1 | 高频地波雷达安装调试 | 7d | 2024-08-29 | 2024-09-04 |
| 22 | 1.8.2.2 | 自动气象站安装调试 | 3d | 2024-09-05 | 2024-09-07 |
| 23 | 1.8.2.3 | 视频监控安装调试 | 1d | 2024-09-08 | 2024-09-08 |
| 24 | 1.8.2.4 | 北斗终端调试接入 | 1d | 2024-09-09 | 2024-09-09 |
| 25 | 1.8.2.5 | VSAT小站安装调试 | 3d | 2024-09-10 | 2024-09-12 |
| 26 | 1.8.2.6 | KVM调试 | 1d | 2024-09-13 | 2024-09-13 |
| 27 | 1.8.2.7 | 运控装置安装调试 | 1d | 2024-09-14 | 2024-09-14 |
| 28 | 1.8.2.8 | 前端软件调试 | 14d | 2024-09-15 | 2024-09-28 |

| ID | WBS | Task | Duration | Start | Finish |
| --- | --- | --- | --- | --- | --- |
| 29 | 1.8.3 | **工程组3** | 61d | 2024-08-16 | 2024-10-15 |
| 30 | 1.8.3.1 | 高频地波雷达安装调试 | 7d | 2024-09-29 | 2024-10-05 |
| 31 | 1.8.3.2 | 自动气象站安装调试 | 3d | 2024-10-06 | 2024-10-08 |
| 32 | 1.8.3.3 | 视频监控安装调试 | 1d | 2024-10-09 | 2024-10-09 |
| 33 | 1.8.3.4 | 北斗终端调试接入 | 1d | 2024-10-10 | 2024-10-10 |
| 34 | 1.8.3.5 | VSAT小站安装调试 | 3d | 2024-10-11 | 2024-10-13 |
| 35 | 1.8.3.6 | 运控装置安装调试 | 1d | 2024-10-14 | 2024-10-14 |
| 36 | 1.8.3.7 | KVM调试 | 1d | 2024-10-15 | 2024-10-15 |
| 37 | 1.8.3.8 | 前端软件调试 | 1d | 2024-08-16 | 2024-08-16 |
| 38 | 1.8.4 | **工程组4** | 1d | 2024-07-11 | 2024-07-11 |
| 39 | 1.8.4.1 | 高频地波雷达安装调试 | 1d | 2024-07-11 | 2024-07-11 |
| 40 | 1.8.4.2 | 自动气象站安装调试 | 1d | 2024-07-11 | 2024-07-11 |
| 41 | 1.8.4.3 | 视频监控安装调试 | 1d | 2024-07-11 | 2024-07-11 |
| 42 | 1.8.4.4 | 北斗终端调试接入 | 1d | 2024-07-11 | 2024-07-11 |
| 43 | 1.8.4.5 | VSAT小站安装调试 | 1d | 2024-07-11 | 2024-07-11 |
| 44 | 1.8.4.6 | 运控装置安装调试 | 1d | 2024-07-11 | 2024-07-11 |
| 45 | 1.8.4.7 | 运控装置安装调试 | 1d | 2024-07-11 | 2024-07-11 |
| 46 | 1.8.4.8 | KVM调试 | 1d | 2024-07-11 | 2024-07-11 |
| 47 | 1.9 | **系统联调** | 1d | 2024-11-15 | 2024-11-15 |
| 48 | 1.9.1 | 服务器搭建 | 1d | 2024-11-15 | 2024-11-15 |
| 49 | 1.9.2 | 网络调试 | 1d | 2024-11-15 | 2024-11-15 |
| 50 | 1.10 | 试运行 | 242d | 2024-11-29 | 2025-07-28 |
| 51 | 1.11 | 比测 | 90d | 2024-12-29 | 2025-03-28 |
| 52 | 1.12 | 验收 | 3d | 2025-07-26 | 2025-07-28 |
| 53 | 2 | 试运行到验收结束 8个月 | 243d | 2024-11-29 | 2025-07-29 |
| 54 | 3 | 质保 | 1d | 2025-07-29 | 2025-07-29 |
